How a schedule from an exported table changed from version to version. A marks actual dates.

## Version 1 (saved 2026-11-26)

Note of the change: Desktop LPBF fast track: parts with today's live reads, sizing and schedule script for 3-6 week alternatives, Edison review query (#260)

| Task | Start | Finish |
| --- | --- | --- |
| used optics chain arrives | 0 | 3 |
| McMaster stock and hardware | 0 | 1 |
| safety parts and eyewear | 0 | 2 |
| O2 analyzer (used) | 0 | 4 |
| argon cylinder and regulator | 0 | 2 |
| PC + RTC5 software | 0 | 1 |
| LSO registration and SOP | 0 | 5 |
| EHS review (Al powder) | 0 | 5 |
| box, plate and stand made | 1 | 4 |
| enclosure arrives | 0 | 3 |
| bench check of laser + scan head | 5 | 7 |
| assemble box, heater, gas | 4 | 5 |
| purge and heat commissioning | 9 | 10 |
| FIRST TRACKS | 16 | 17 |
| hand-spread single layers and pads | 8 | 10 |
| Zaber stages arrive (PO) | 0 | 11 |
| 12 simple parts made | 1 | 6 |
| assemble mechanism in the box | 6 | 9 |
| interlock commissioning | 14 | 15 |
| powder layers: dose, spread, pads | 17 | 20 |
| FIRST COUPONS | 20 | 22 |
| stages arrive (PCard) | 0 | 3 |
| chamber frame and plates arrive (PO) | 0 | 11 |
| pump, KF parts, Pirani | 0 | 2 |
| 12 simple parts + window plate made | 1 | 7 |
| assemble mechanism in the chamber | 11 | 14 |
| leak check, pump-purge and heat commissioning | 14 | 16 |

## Version 2 (saved 2026-11-27)

Note of the change: Desktop LPBF fast track round 2: schedule on the fabrication worker's shop hours (fab/out/hours.json, per state at 8 and 5 shop h a working day), the RTC4's eBay window, the percent O2 transmitter and a 208/240 V circuit for the laser: FT-1 coupons at 3.7-9.3 weeks on PCards (3.2-6.5 with 12 shop h a day), FT-0 tracks at 1.9-5.3 weeks (#260)

Added:

| Task | Start | Finish |
| --- | --- | --- |
| O2 analyzers arrive | 0 | 4 |
| RTC4 card + PC and software | 0 | 3 |
| 208/240 V circuit for the laser | 0 | 3 |
| S1 parts made | 1 | 2.1 |
| S2 parts made | 2.1 | 3.7 |
| FT-0 parts made | 3.7 | 6.5 |
| FT-1 parts made | 6.5 | 8.3 |
| FT-1V parts made | 8.3 | 9.4 |
| leak check, pump-purge, heat | 14 | 16 |

Removed: O2 analyzer (used); PC + RTC5 software; box, plate and stand made; 12 simple parts made; 12 simple parts + window plate made; leak check, pump-purge and heat commissioning

Changed:

| Task | Start | Finish |
| --- | --- | --- |
| assemble box, heater, gas | 4 → 6.5 | 5 → 7.5 |
| purge and heat commissioning | 9 → 11.3 | 10 → 12.3 |
| hand-spread single layers and pads | 8 → 9.5 | 10 → 11.5 |
| assemble mechanism in the box | 6 → 8.3 | 9 → 11.3 |

## Version 3 (saved 2026-11-28)

Note of the change: Desktop LPBF fast track round 3: costs and schedule on the CAD v2 shop hours (fab/out/hours.json: 81/166/249 h to FT-1): parts.csv's shop-time lines F2a-c re-priced (FT-1 $5.3k-10.8k); FT-1 $30.6k-49.6k ($25.4k-42.0k without monitoring), first coupons 4.2-11.0 weeks at 5-8 shop h a day, 3.6-7.1 weeks at 12 (#260)

Changed:

| Task | Start | Finish |
| --- | --- | --- |
| S1 parts made |  | 2.1 → 3.4 |
| S2 parts made | 2.1 → 3.4 | 3.7 → 5.3 |
| FT-0 parts made | 3.7 → 5.3 | 6.5 → 9.2 |
| assemble box, heater, gas | 6.5 → 9.2 | 7.5 → 10.2 |
| purge and heat commissioning | 11.3 → 14.1 | 12.3 → 15.1 |
| FIRST TRACKS | 16 → 18.4 | 17 → 19.4 |
| hand-spread single layers and pads | 9.5 → 12.2 | 11.5 → 14.2 |
| FT-1 parts made | 6.5 → 9.2 | 8.3 → 11.1 |
| assemble mechanism in the box | 8.3 → 11.1 | 11.3 → 14.1 |
| interlock commissioning | 14 → 16.4 | 15 → 17.4 |
| powder layers: dose, spread, pads | 17 → 19.4 | 20 → 22.4 |
| FIRST COUPONS | 20 → 22.4 | 22 → 24.4 |
| FT-1V parts made | 8.3 → 11.1 | 9.4 → 13.399999999999999 |
| assemble mechanism in the chamber | 11 → 13.399999999999999 | 14 → 16.4 |
| leak check, pump-purge, heat | 14 → 16.4 | 16 → 18.4 |
